# 项目任务分解

Schedule from MS Project, 2026-09-03 to 2026-11-06, status date 2026-09-24, costs in ¥, A marks actual dates.

## Calendars

- 标准: Mon-Fri 08:00-12:00, 13:00-17:00; Sat-Sun off.

## Resources

| Resource | Rate |
| --- | --- |
| 蔡俊杰 | 12 |
| 李汶航 | 12 |
| 陈泽恩 | 12 |
| 欧阳宇康 | 12 |

## Schedule

| ID | WBS | Task | Type | Duration | Start | Finish | Predecessors | Complete | Remaining | Baseline start | Baseline finish | Baseline duration | Total slack | Constraint | Resources | Work | Actual work | Cost | Baseline cost | Actual cost |
| --- | --- | --- | --- | --- | --- | --- | --- | --- | --- | --- | --- | --- | --- | --- | --- | --- | --- | --- | --- | --- |
| 1 | 1 | **项目启动与规划** |  | 6d | 2026-09-03 A | 2026-09-10 A |  | 100% |  | 2026-09-03 | 2026-09-08 | 4d |  |  |  | 64h | 64h | 768 | 288 | 768 |
| 2 | 1.1 | 项目立项、章程与分工 | manual | 6d | 2026-09-03 A | 2026-09-09 A |  | 100% |  | 2026-09-03 | 2026-09-04 | 2d |  |  | 蔡俊杰 [25%]; 李汶航 [25%] | 24h | 24h | 288 | 96 | 288 |
| 3 | 1.2 | 开发环境与工具准备 | manual | 5d | 2026-09-03 A | 2026-09-08 A |  | 100% |  | 2026-09-03 | 2026-09-04 | 2d |  |  | 蔡俊杰 [25%]; 陈泽恩 [25%] | 20h | 20h | 240 | 96 | 240 |
| 4 | 1.3 | 项目介绍与参考资料整理 | manual | 5d | 2026-09-07 A | 2026-09-10 A | 2 | 100% |  | 2026-09-07 | 2026-09-08 | 2d |  |  | 蔡俊杰 [25%]; 李汶航 [25%] | 20h | 20h | 240 | 96 | 240 |
| 5 | 2 | **需求与设计** |  | 7d | 2026-09-09 A | 2026-09-17 A |  | 100% |  | 2026-09-09 | 2026-09-18 | 8d |  |  |  | 64h | 64h | 768 | 648 | 768 |
| 6 | 2.1 | 需求调查与需求建模 | manual | 6d | 2026-09-09 A | 2026-09-15 A | 4 | 100% |  | 2026-09-09 | 2026-09-11 | 3d |  |  | 蔡俊杰 [25%]; 欧阳宇康 [25%] | 24h | 24h | 288 | 144 | 288 |
| 7 | 2.2 | 需求规格说明书撰写 | manual | 4d | 2026-09-10 A | 2026-09-14 A | 6 | 100% |  | 2026-09-14 | 2026-09-17 | 4d |  |  | 蔡俊杰 [25%]; 李汶航 [25%]; 欧阳宇康 [25%]; 陈泽恩 [25%] | 32h | 32h | 384 | 384 | 384 |
| 8 | 2.3 | 系统设计文档撰写 | manual | 4d | 2026-09-15 A | 2026-09-17 A | 6 | 100% |  | 2026-09-14 | 2026-09-18 | 5d |  |  | 蔡俊杰 [25%]; 李汶航 [25%]; 欧阳宇康 [25%]; 陈泽恩 [25%] | 8h | 8h | 96 | 120 | 96 |
| 9 | 3 | **系统开发** |  | 12d | 2026-09-07 A | 2026-09-22 A |  | 100% |  | 2026-09-07 | 2026-09-23 | 13d |  |  |  | 52h | 52h | 624 | 528 | 624 |
| 10 | 3.1 | 前端基础页面开发 | manual | 6d | 2026-09-07 A | 2026-09-11 A | 2 | 100% |  | 2026-09-07 | 2026-09-13 | 6d |  |  | 李汶航 [25%] | 12h | 12h | 144 | 144 | 144 |
| 11 | 3.2 | 后端检测闭环（视频源/检测任务/告警/接口） | manual | 6d | 2026-09-14 A | 2026-09-18 A | 10 | 100% |  | 2026-09-14 | 2026-09-18 | 5d |  |  | 蔡俊杰 [25%]; 欧阳宇康 [25%] | 24h | 24h | 288 | 240 | 288 |
| 12 | 3.3 | 前后端联调与实时画面上线 | manual | 4d | 2026-09-18 A | 2026-09-22 A | 11 | 100% |  | 2026-09-21 | 2026-09-23 | 3d |  |  | 蔡俊杰 [25%]; 李汶航 [25%] | 16h | 16h | 192 | 144 | 192 |
| 13 | 4 | **数据与模型** |  | 23d? | 2026-09-08 A | 2026-10-08 |  | 38% | 14.23d? | 2026-09-07 | 2026-10-08 | 24d? | 0d |  |  | 112h | 39.8h | 1,344 | 1,752 | 477.6 |
| 14 | 4.1 | 数据集获取与质量体检 |  | 3d? | 2026-09-08 A | 2026-09-12 A | 3 | 100% |  | 2026-09-07 | 2026-09-22 | 12d? |  | finish no earlier than 2026-09-10 | 陈泽恩 [25%]; 欧阳宇康 [25%] | 12h | 12h | 144 | 576 | 144 |
| 15 | 4.2 | 首轮模型训练与评测 | manual | 4d | 2026-09-09 A | 2026-09-11 A | 14 | 100% |  | 2026-09-11 | 2026-09-15 | 3d |  |  | 蔡俊杰 [25%] | 8h | 8h | 96 | 72 | 96 |
| 16 | 4.3 | 数据清洗与防泄漏重划分 | manual | 4d | 2026-09-11 | 2026-09-16 | 14 |  |  | 2026-09-11 | 2026-09-16 | 4d |  |  | 蔡俊杰 [25%]; 陈泽恩 [25%] | 16h |  | 192 | 192 |  |
| 17 | 4.4 | 烟雾与远距离类数据集补充 | manual | 11d | 2026-09-17 A | 2026-09-30 | 16 | 30% | 7.7d | 2026-09-17 | 2026-10-01 | 11d |  |  | 陈泽恩 [25%]; 李汶航 [25%]; 欧阳宇康 [25%] | 66h | 19.8h | 792 | 792 | 237.6 |
| 18 | 4.5 | 数据重训与现有模型对比评测 | manual | 5d | 2026-10-02 | 2026-10-08 | 17 |  |  | 2026-10-02 | 2026-10-08 | 5d |  |  | 蔡俊杰 [25%] | 10h |  | 120 | 120 |  |
| 19 | 5 | **智能体与远距离识别** |  | 11d | 2026-10-09 | 2026-10-23 |  |  |  | 2026-10-09 | 2026-10-23 | 11d | 0d |  |  | 50h |  | 600 | 600 |  |
| 20 | 5.1 | 切片推理与多尺度检测 | manual | 5d | 2026-10-09 | 2026-10-15 | 18 |  |  | 2026-10-09 | 2026-10-15 | 5d |  |  | 蔡俊杰 [25%] | 10h |  | 120 | 120 |  |
| 21 | 5.2 | 智能体复核 | manual | 5d | 2026-10-16 | 2026-10-22 | 20 |  |  | 2026-10-16 | 2026-10-22 | 5d |  |  | 蔡俊杰 [25%]; 李汶航 [25%] | 20h |  | 240 | 240 |  |
| 22 | 5.3 | 远景测试与误报评估 | manual | 5d | 2026-10-19 | 2026-10-23 |  |  |  | 2026-10-19 | 2026-10-23 | 5d |  |  | 陈泽恩 [25%]; 欧阳宇康 [25%] | 20h |  | 240 | 240 |  |
| 23 | 6 | **测试与验收** |  | 25d | 2026-09-24 | 2026-10-28 |  |  |  | 2026-09-24 | 2026-10-28 | 25d | 0d |  |  | 28h |  | 336 | 336 |  |
| 24 | 6.1 | 功能测试与缺陷记录 | manual | 2d | 2026-09-24 | 2026-09-25 | 12 |  |  | 2026-09-24 | 2026-09-25 | 2d |  |  | 欧阳宇康 [25%] | 4h |  | 48 | 48 |  |
| 25 | 6.2 | 缺陷修复与回归测试 | manual | 3d | 2026-09-28 | 2026-09-30 | 24 |  |  | 2026-09-28 | 2026-09-30 | 3d |  |  | 李汶航 [25%]; 蔡俊杰 [25%] | 12h |  | 144 | 144 |  |
| 26 | 6.3 | 误报与可靠性测试 | manual | 3d | 2026-10-26 | 2026-10-28 |  |  |  | 2026-10-26 | 2026-10-28 | 3d |  |  | 陈泽恩 [25%]; 欧阳宇康 [25%] | 12h |  | 144 | 144 |  |

| ID | WBS | Task | Type | Duration | Start | Finish | Predecessors | Baseline start | Baseline finish | Baseline duration | Total slack | Resources | Work | Cost | Baseline cost |
| --- | --- | --- | --- | --- | --- | --- | --- | --- | --- | --- | --- | --- | --- | --- | --- |
| 27 | 7 | **演示与结项** |  | 6d | 2026-10-29 | 2026-11-05 |  | 2026-10-29 | 2026-11-05 | 6d | 0d |  | 28h | 336 | 336 |
| 28 | 7.1 | 手机推流实测与演示 | manual | 3d | 2026-10-29 | 2026-11-02 | 25, 26 | 2026-10-29 | 2026-11-02 | 3d |  | 蔡俊杰 [25%]; 李汶航 [25%] | 12h | 144 | 144 |
| 29 | 7.2 | 结项报告与材料归档 | manual | 2d | 2026-11-04 | 2026-11-05 |  | 2026-11-04 | 2026-11-05 | 2d |  | 蔡俊杰 [25%]; 李汶航 [25%]; 欧阳宇康 [25%]; 陈泽恩 [25%] | 16h | 192 | 192 |
| 30 | 8 | **项目里程碑** |  | 47d | 2026-09-03 | 2026-11-06 |  | 2026-09-03 | 2026-11-06 | 47d |  |  |  |  |  |
| 31 | 8.1 | 需求规格说明书定稿 | milestone, manual | 0d | 2026-09-18 | 2026-09-18 | 7 | 2026-09-18 | 2026-09-18 | 0d |  | 蔡俊杰 [25%] |  |  |  |
| 32 | 8.2 | 系统核心闭环完成 | milestone, manual | 0d | 2026-09-24 | 2026-09-24 | 12 | 2026-09-24 | 2026-09-24 | 0d |  | 蔡俊杰 [25%] |  |  |  |
| 33 | 8.3 | 数据治理与模型重训完成 | milestone, manual | 0d | 2026-10-09 | 2026-10-09 | 18 | 2026-10-09 | 2026-10-09 | 0d |  | 蔡俊杰 [25%] |  |  |  |
| 34 | 8.4 | 智能体与远距离识别完成 | milestone, manual | 0d | 2026-10-26 | 2026-10-26 | 22 | 2026-10-26 | 2026-10-26 | 0d |  | 蔡俊杰 [25%] |  |  |  |
| 35 | 8.5 | 项目结项演示 | milestone, manual | 0d | 2026-11-06 | 2026-11-06 | 29 | 2026-11-06 | 2026-11-06 | 0d |  | 蔡俊杰 [25%]; 李汶航 [25%]; 欧阳宇康 [25%]; 陈泽恩 [25%] |  |  |  |
